# BBQRMS Project Plan 2011

Schedule from MS Project, 2011-01-03 to 2011-04-18.
LDS Church

## Calendars

- Standard: Mon-Fri 08:00-12:00, 13:00-17:00; Sat-Sun off.

## Resources

| Resource |
| --- |
| Jerod |
| Mike |
| Scott |
| Jessie |
| Bob |

## Schedule

| ID | WBS | Task | Type | Duration | Start | Finish | Predecessors | Total slack | Free slack | Constraint | Resources | Work |
| --- | --- | --- | --- | --- | --- | --- | --- | --- | --- | --- | --- | --- |
| 1 | 1 | **Iteration 1 (1/3-1/19)** |  | 13d | 2011-01-03 | 2011-01-19 |  | 5d |  |  |  | 408h |
| 2 | 1.1 | Revise Project Plan |  | 6d | 2011-01-03 | 2011-01-10 |  | 5d | 0d |  | Jerod; Scott; Mike; Jessie | 192h |
| 3 | 1.2 | Revise SSRS |  | 2d | 2011-01-11 | 2011-01-12 | 2 | 5d |  |  | Jerod; Scott; Mike; Jessie | 64h |
| 4 | 1.3 | Revised SSRS Due | milestone | 0d | 2011-01-19 | 2011-01-19 | 2, 3 | 0d |  | must finish on 2011-01-19 |  |  |
| 5 | 1.4 | Build Initial Database structure |  | 5d | 2011-01-13 | 2011-01-19 |  | 63d |  |  | Jerod | 40h |
| 6 | 1.5 | BBQRMS-42 Shell - Main application navigation |  | 2d | 2011-01-13 | 2011-01-14 |  | 65d | 1d |  | Mike | 16h |
| 7 | 1.6 | BBQRMS-44 Shell - Setup database server and communication |  | 1d | 2011-01-17 | 2011-01-17 |  | 64d | 0d |  | Mike | 8h |
| 8 | 1.7 | BBQRMS-18 Inventory Management - Receive an inventory order |  | 5d | 2011-01-13 | 2011-01-19 |  | 63d |  |  | Jessie | 40h |
| 9 | 1.8 | BBQRMS-45 Order Entry - Design User Interface for Placing Customer Orders |  | 5d | 2011-01-13 | 2011-01-19 |  | 55d | 0d |  | Scott | 40h |
| 10 | 1.9 | BBQRMS-22 Security - Users can log in |  | 0.5d | 2011-01-18 | 2011-01-18 | 6, 7 | 64d | 0d |  | Mike | 4h |
| 11 | 1.10 | BBQRMS-23 Security - Users can log out |  | 0.5d | 2011-01-18 | 2011-01-18 | 10 | 64d |  |  | Mike | 4h |
| 12 | 1.11 | Graded Checkpoint 1 | milestone | 0d | 2011-01-19 | 2011-01-19 |  | 0d |  | must finish on 2011-01-19 |  |  |
| 13 | 2 | **Iteration 2 (1/20-1/31)** |  | 8d | 2011-01-20 | 2011-01-31 |  | 8d |  | start no earlier than 2011-01-20 |  | 320h |
| 14 | 2.1 | BBQRMS-24 Security - Program features are limited by assigned user roles |  | 2d | 2011-01-28 | 2011-01-31 |  | 55d |  |  | Mike | 16h |
| 15 | 2.2 | BBQRMS-43 Reports - Integrated reporting tool |  | 6d | 2011-01-20 | 2011-01-27 |  | 57d |  |  | Mike | 48h |
| 16 | 2.3 | BBQRMS-33 Order Entry - Place and save customer order without taking payment |  | 4d | 2011-01-20 | 2011-01-25 | 9 | 59d |  |  | Scott | 32h |
| 17 | 2.4 | BBQRMS-37 Order Entry - Recall and modify saved customer order |  | 4d | 2011-01-26 | 2011-01-31 | 9 | 55d |  |  | Scott | 32h |
| 18 | 2.5 | BBQRMS-17 Inventory Management - Add Supplier |  | 8d | 2011-01-20 | 2011-01-31 |  | 55d |  |  | Jessie | 64h |
| 19 | 2.6 | BBQRMS-39 admin - Add/Modify Employees |  | 8d | 2011-01-20 | 2011-01-31 |  | 55d |  |  | Jerod [50%] | 32h |
| 20 | 2.7 | BBQRMS-31 Menu Management - Create/Edit/Delete Menu |  | 8d | 2011-01-20 | 2011-01-31 |  | 55d |  |  | Bob; Jerod [50%] | 96h |
| 21 | 2.8 | Graded Progress Check 2 | milestone | 0d | 2011-01-31 | 2011-01-31 |  | 0d |  | must finish on 2011-01-31 |  |  |
| 22 | 3 | **Iteration 3 (2/1-2/14)** |  | 10d | 2011-02-01 | 2011-02-14 |  | 45d |  | start no earlier than 2011-02-01 |  | 364h |
| 23 | 3.1 | BBQRMS-36 Cashiering - Accept payment for saved customer order |  | 5d | 2011-02-01 | 2011-02-07 |  | 50d |  |  | Scott | 40h |
| 24 | 3.2 | BBQRMS-35 Order Entry - Take a customer order and accept payment |  | 5d | 2011-02-08 | 2011-02-14 |  | 45d |  |  | Scott | 40h |
| 25 | 3.3 | BBQRMS-19 Inventory Management - Reconcile Inventory |  | 10d | 2011-02-01 | 2011-02-14 |  | 45d |  |  | Jessie | 80h |
| 26 | 3.4 | BBQRMS-30 Security - Users can clock in and clock out |  | 4d | 2011-02-01 | 2011-02-04 |  | 51d |  |  | Mike | 32h |
| 27 | 3.5 | BBQRMS-25 Security - Users can change their PIN |  | 2d | 2011-02-07 | 2011-02-08 |  | 49d |  |  | Mike | 16h |
| 28 | 3.6 | BBQRMS-28 Reports - Daily Sales Report |  | 2d | 2011-02-09 | 2011-02-10 |  | 47d |  |  | Mike | 16h |
| 29 | 3.7 | BBQRMS-40 admin - Add/Modify Roles and Privs |  | 5d | 2011-02-01 | 2011-02-07 |  | 50d |  |  | Jerod [50%] | 20h |
| 30 | 3.8 | BBQRMS-31 Menu Management - Create/Edit/Delete Menu Item |  | 10d | 2011-02-01 | 2011-02-14 |  | 45d |  |  | Bob; Jerod [50%] | 120h |

| ID | WBS | Task | Type | Duration | Start | Finish | Predecessors | Total slack | Free slack | Constraint | Resources | Work |
| --- | --- | --- | --- | --- | --- | --- | --- | --- | --- | --- | --- | --- |
| 31 | 4 | **Iteration 4 (2/15-2/28)** |  | 10d | 2011-02-15 | 2011-02-28 |  | -1d | 0d | start no earlier than 2011-02-15 |  | 336h |
| 32 | 4.1 | BBQRMS-2 Reports - Daily Shopping List |  | 3d | 2011-02-22 | 2011-02-24 |  | 37d |  |  | Mike | 24h |
| 33 | 4.2 | Cashiering - Print Receipt |  | 5d | 2011-02-15 | 2011-02-21 |  | 40d |  |  | Mike | 40h |
| 34 | 4.3 | BBQRMS-32 Cook Screen - Complete a Customer Order |  | 5d | 2011-02-15 | 2011-02-21 |  | 40d |  |  | Scott | 40h |
| 35 | 4.4 | BBQRMS-34 Cashiering - Split a Check |  | 5d | 2011-02-22 | 2011-02-28 |  | 35d |  |  | Scott | 40h |
| 36 | 4.5 | BBQRMS-16 Inventory Management - Touch-screen |  | 4d | 2011-02-15 | 2011-02-18 |  | 41d |  |  | Jessie | 32h |
| 37 | 4.6 | Dashboard - Display managers dashboard |  | 1d | 2011-02-28 | 2011-02-28 |  | 35d |  |  | Jerod | 8h |
| 38 | 4.7 | Dashboard - Display whose on the clock |  | 1d | 2011-02-28 | 2011-02-28 |  | 35d |  |  | Bob | 8h |
| 39 | 4.8 | Test Plan |  | 1d | 2011-02-15 | 2011-02-15 |  | 0d |  | as late as possible | Bob; Jerod | 16h |
| 40 | 4.9 | System testing |  | 8d | 2011-02-16 | 2011-02-25 | 39 | -2d | 0d | as late as possible | Bob; Jerod | 128h |
| 41 | 4.10 | Testing Results | milestone | 0d | 2011-02-23 | 2011-02-23 | 40 | -2d | 0d | must finish on 2011-02-23 |  |  |
| 42 | 4.11 | Graded Checkpoint 3 | milestone | 0d | 2011-02-28 | 2011-02-28 |  | 0d |  | must finish on 2011-02-28 |  |  |
| 43 | 5 | **Iteration 5 (3/1-3/14)** |  | 10d | 2011-03-01 | 2011-03-14 |  | 25d |  | start no earlier than 2011-03-01 |  | 384h |
| 44 | 5.1 | BBQRMS-26 Reports - Income statement |  | 1d | 2011-03-08 | 2011-03-08 |  | 29d |  |  | Mike | 8h |
| 45 | 5.2 | BBQRMS-29 Reports - Inventory turns |  | 1d | 2011-03-09 | 2011-03-09 |  | 28d |  |  | Mike | 8h |
| 46 | 5.3 | BBQRMS-27 Reports - Weekly prime cost report |  | 1d | 2011-03-10 | 2011-03-10 |  | 27d |  |  | Mike | 8h |
| 47 | 5.4 | Cashiering - Open Cash drawer |  | 5d | 2011-03-01 | 2011-03-07 |  | 30d |  |  | Mike | 40h |
| 48 | 5.5 | BBQRMS-38 Cashiering - Take multiple methods of payment for a customer order |  | 5d | 2011-03-01 | 2011-03-07 |  | 30d |  |  | Scott | 40h |
| 49 | 5.6 | Cashiering - Process Credit Card |  | 5d | 2011-03-08 | 2011-03-14 |  | 25d |  |  | Scott | 40h |
| 50 | 5.7 | Dashboard - Display estimated daily profit. |  | 3d | 2011-03-07 | 2011-03-09 |  | 28d |  |  | Jerod | 24h |
| 51 | 5.8 | Dashboard - Display estimated cost of goods |  | 3d | 2011-03-10 | 2011-03-14 |  | 25d |  |  | Jerod | 24h |
| 52 | 5.9 | BBQRMS-5 Update UI for user management to be touch friendly |  | 4d | 2011-03-01 | 2011-03-04 |  | 31d |  |  | Jerod | 32h |
| 53 | 5.10 | System testing |  | 10d | 2011-03-01 | 2011-03-14 |  | 25d |  |  | Jessie; Bob | 160h |
| 54 | 6 | **Iteration 6 (3/15-4/4)** |  | 15d | 2011-03-15 | 2011-04-04 |  | 0d |  | start no earlier than 2011-03-15 |  | 600h |
| 55 | 6.1 | Beta testing |  | 7d | 2011-03-15 | 2011-03-23 |  | 0d |  | as late as possible | Jerod; Scott; Mike; Jessie; Bob | 280h |
| 56 | 6.2 | Beta Test Results | milestone | 0d | 2011-03-23 | 2011-03-23 | 55 | 0d |  | must finish on 2011-03-23 |  |  |
| 57 | 6.3 | Bug Fixing |  | 8d | 2011-03-24 | 2011-04-04 |  | 10d |  |  | Jerod; Scott; Mike; Jessie | 256h |
| 58 | 6.4 | System Testing |  | 8d | 2011-03-24 | 2011-04-04 |  | 10d |  |  | Bob | 64h |
| 59 | 6.5 | Graded Checkpoint 4 | milestone | 0d | 2011-04-04 | 2011-04-04 |  | 0d |  | must finish on 2011-04-04 |  |  |

| ID | WBS | Task | Type | Duration | Start | Finish | Total slack | Constraint | Resources | Work |
| --- | --- | --- | --- | --- | --- | --- | --- | --- | --- | --- |
| 60 | 7 | **Iteration 7 (4/5-4/18)** |  | 10d? | 2011-04-05 | 2011-04-18 | 0d | start no earlier than 2011-04-05 |  | 400h |
| 61 | 7.1 | Burn in |  | 10d | 2011-04-05 | 2011-04-18 | 0d |  | Jerod; Scott; Mike; Jessie; Bob | 400h |
| 62 | 7.2 | Final Delivery to Instructor | milestone | 0d | 2011-04-13 | 2011-04-13 | 0d | must finish on 2011-04-13 |  |  |
| 63 | 7.3 | Project Go Live | milestone | 0d | 2011-04-18 | 2011-04-18 | 0d | must finish on 2011-04-18 |  |  |
| 65 | 7.4 | Dashboard - Display Current turnaround time |  | 1d? | 2011-04-05 | 2011-04-05 | 9d |  |  |  |
| 66 | 7.5 | Dashboard - Display hourly income graph |  | 1d? | 2011-04-05 | 2011-04-05 | 9d |  |  |  |
| 67 | 7.6 | Dashboard - Display menu items sold bar graph |  | 1d? | 2011-04-05 | 2011-04-05 | 9d |  |  |  |
